# Spring 2008 Schedule~671

Schedule from MS Project, 2008-04-01 to 2008-08-29, A marks actual dates.

## Calendars

- Standard: Mon-Fri 08:00-12:00, 13:00-17:00; Sat-Sun off. Exceptions (off unless hours are given): 2008-04-06 08:00-12:00, 13:00-17:00, 2008-04-12 to 2008-04-13 08:00-12:00, 13:00-17:00, 2008-04-19 08:00-12:00, 13:00-17:00, 2008-05-11 08:00-12:00, 13:00-17:00.

## Schedule

| ID | Task | Duration | Start | Finish | Predecessors | Complete | Remaining | Total slack | Constraint |
| --- | --- | --- | --- | --- | --- | --- | --- | --- | --- |
| 1 | Build all unary gates in lab | 0.8w? | 2008-04-01 A | 2008-04-04 A |  | 100% |  |  | finish no earlier than 2008-04-04 |
| 2 | Build a 3:1 multiplexer | 2.5d? | 2008-04-03 A | 2008-04-07 A | 1 | 100% |  |  |  |
| 3 | Antonio learn Ltspice | 3d? | 2008-04-02 A | 2008-04-04 A |  | 100% |  |  | start no earlier than 2008-04-02 |
| 4 | Chirag learn and setup git | 10d? | 2008-04-02 A | 2008-04-13 A |  | 100% |  |  | finish no earlier than 2008-04-13 |
| 5 | Himanshu administrative tasks | 13d? | 2008-04-01 A | 2008-04-14 A |  | 100% |  |  | finish no earlier than 2008-04-14 |
| 6 | Expression evaluator working | 1.4w? | 2008-04-01 A | 2008-04-09 A |  | 100% |  |  | finish no earlier than 2008-04-09 |
| 7 | Senior project proposal due | 1d? | 2008-04-07 A | 2008-04-07 A |  | 100% |  |  | start no earlier than 2008-04-07 |
| 8 | Build dyadic gates in lab | 0.5w? | 2008-04-08 A | 2008-04-10 A |  | 100% |  |  | start no earlier than 2008-04-09 |
| 9 | Build ternary cycling gate | 3d? | 2008-04-16 A | 2008-04-18 A |  | 100% |  |  | finish no earlier than 2008-04-18 |
| 10 | Wiki server RAID 0+1->1 disk upgrades | 7d? | 2008-04-06 A | 2008-04-12 A |  | 100% |  |  | start no earlier than 2008-04-06 |
| 11 | Honors Open House - decide on timeslot | 11d? | 2008-04-09 A | 2008-04-19 A |  | 100% |  |  | finish no earlier than 2008-04-19 |
| 12 | Honors Open House Poster Due | 9d? | 2008-04-08 A | 2008-04-16 A |  | 100% |  |  | finish no earlier than 2008-04-16 |
| 13 | Instruction-level simulator working | 5.5d? | 2008-04-10 A | 2008-04-15 A | 6 | 100% |  |  |  |
| 14 | Honors Open House Presentation 1:30-2 | 1d? | 2008-04-19 A | 2008-04-19 A |  | 100% |  |  | finish no earlier than 2008-04-19 |
| 15 | Simulate all tri-flop circuits | 16d? | 2008-04-03 A | 2008-04-21 A |  | 100% |  |  | finish no earlier than 2008-04-21 |
| 16 | Build dtflop-ms tri-flop circuit | 9.5d? | 2008-04-10 A | 2008-04-19 A |  | 100% |  |  | finish no earlier than 2008-04-19 |
| 17 | Circuit layout program functional | 8d? | 2008-04-11 A | 2008-04-18 A |  | 100% |  |  | finish no earlier than 2008-04-18 |
| 18 | Order and receive purchase #3 | 17.5d? | 2008-04-02 A | 2008-04-21 A |  | 100% |  |  | finish no earlier than 2008-04-16 |
| 19 | Design SP3T footprint for FreePCB | 5d? | 2008-04-21 A | 2008-04-25 A |  | 100% |  |  | finish no earlier than 2008-04-25 |
| 20 | Label all nodes in LTspice properly | 1d? | 2008-04-21 A | 2008-04-21 A |  | 100% |  |  | finish no earlier than 2008-05-02 |
| 21 | Decide about reading textbook | 1d? | 2008-04-28 A | 2008-04-28 A |  | 100% |  |  | finish no earlier than 2008-04-28 |
| 22 | SWROM PCB layout and routing | 5d? | 2008-04-24 A | 2008-04-30 A |  | 100% |  |  | finish no earlier than 2008-04-30 |
| 23 | Design and simulate ALU | 13d? | 2008-04-21 A | 2008-05-07 A |  | 100% |  |  | finish no earlier than 2008-05-07 |
| 24 | Expression creator functional | 7d | 2008-04-21 A | 2008-04-29 A |  | 100% |  |  | finish no earlier than 2008-04-29 |
| 25 | Order PCB for 9-bit SWROM | 10d? | 2008-04-28 A | 2008-05-09 A |  | 100% |  |  | start no earlier than 2008-04-28 |
| 26 | Retest dtflop-ms in lab | 6d? | 2008-04-28 A | 2008-05-05 A |  | 100% |  |  | finish no earlier than 2008-05-05 |
| 27 | Layout memory board | 2d? | 2008-05-05 A | 2008-05-06 A |  | 100% |  |  | finish no earlier than 2008-05-06 |
| 28 | CMP instruction working | 6d? | 2008-05-05 A | 2008-05-12 A |  | 100% |  |  | finish no earlier than 2008-05-12 |
| 29 | Order PCB of memory board | 2d? | 2008-05-06 A | 2008-05-07 A |  | 100% |  |  | finish no earlier than 2008-05-07 |
| 30 | Layout mux board | 6d? | 2008-05-05 A | 2008-05-12 A |  | 100% |  |  | finish no earlier than 2008-05-12 |
| 31 | Order PCB of control board | 1d? | 2008-05-12 A | 2008-05-12 A | 28 | 100% |  |  | start no earlier than 2008-05-12 |
| 32 | Base 3 converter functional | 16d | 2008-04-21 A | 2008-05-12 A |  | 100% |  |  | finish no earlier than 2008-05-12 |
| 33 | Chirag install git on MacBook | 6d? | 2008-05-05 A | 2008-05-12 A |  | 100% |  |  | start no earlier than 2008-05-05 |
| 34 | Honors Progress Report 2 | 2d | 2008-05-06 A | 2008-05-07 A |  | 100% |  |  | finish no earlier than 2008-05-07 |
| 35 | Layout PCB of logic board | 7d? | 2008-05-11 A | 2008-05-19 A |  | 100% |  |  | finish no earlier than 2008-05-19 |
| 36 | BE instruction working | 5d? | 2008-05-12 A | 2008-05-16 A |  | 100% |  |  | finish no earlier than 2008-05-18 |
| 37 | Layout ALU board | 11d? | 2008-05-05 A | 2008-05-19 A |  | 100% |  |  | finish no earlier than 2008-05-19 |
| 38 | 3-trit high-level language specification | 23d? | 2008-04-28 A | 2008-05-27 A |  | 100% |  |  | finish no earlier than 2008-05-27 |
| 39 | Jeff - Ch4: Machine Language | 6d? | 2008-04-28 A | 2008-05-05 A |  | 100% |  |  | finish no earlier than 2008-05-05 |
| 40 | Antonio - Ch7: VM I: Stack Arithmetic | 11d? | 2008-04-28 A | 2008-05-12 A |  | 100% |  |  | finish no earlier than 2008-05-12 |
| 41 | Jeff - Ch5: Computer Architecture | 6d? | 2008-05-05 A | 2008-05-12 A |  | 100% |  |  | finish no earlier than 2008-05-12 |
| 42 | Antonio - Ch8: VM II: Program Control | 6d? | 2008-05-05 A | 2008-05-12 A |  | 100% |  |  | finish no earlier than 2008-05-12 |
| 43 | Antonio - Ch9: High-level Language | 16d? | 2008-05-06 A | 2008-05-26 A |  | 100% |  |  | finish no earlier than 2008-05-26 |
| 44 | eval.py return 0, i, 1 | 11d? | 2008-04-28 A | 2008-05-12 A |  | 100% |  |  | finish no earlier than 2008-05-12 |
| 45 | eval.py, allow literals 0, i, 1 | 12d? | 2008-04-29 A | 2008-05-13 A |  | 100% |  |  | finish no earlier than 2008-05-13 |
| 46 | eval.py, allow trit vectors as inputs | 19d? | 2008-04-29 A | 2008-05-22 A |  | 100% |  |  | finish no earlier than 2008-05-26 |
| 47 | Jeff - Ch6: Assembler | 6d? | 2008-05-12 A | 2008-05-19 A |  | 100% |  |  | finish no earlier than 2008-05-19 |
| 48 | CPU simulation, allow graceful termination | 14d? | 2008-05-06 A | 2008-05-22 A |  | 100% |  |  | finish no earlier than 2008-05-26 |
| 49 | Antonio - Ch10: Compiler I: Syntax Analysis | 11d? | 2008-05-12 A | 2008-05-26 A |  | 100% |  |  | finish no earlier than 2008-05-26 |
| 50 | Antonio - Enroll in senior project summer | 6d | 2008-05-19 A | 2008-05-26 A |  | 100% |  |  | start no earlier than 2008-05-19 |
| 51 | Senior project spec & schedule draft due | 6d? | 2008-05-16 A | 2008-05-23 A |  | 100% |  |  | finish no earlier than 2008-05-23 |
| 52 | Photoshop VTC curve | 26d? | 2008-04-28 A | 2008-05-30 |  | 85% | 4d? | 65d | finish no earlier than 2008-05-30 |
| 53 | Construct & text mux PCB | 10d | 2008-05-19 A | 2008-05-30 |  | 60% | 4d | 65d | finish no earlier than 2008-05-30 |
| 54 | Construct & test dtflop-ms2 PCB | 10d | 2008-05-19 A | 2008-05-30 |  | 60% | 4d | 65d | finish no earlier than 2008-05-30 |
| 55 | Design clock generator circuit | 11d? | 2008-05-19 | 2008-06-02 |  |  |  | 4d | finish no earlier than 2008-06-02 |
| 56 | Antonio - Ch11: Compiler II: Code Generation | 11d? | 2008-05-13 | 2008-05-27 |  |  |  | 8d | finish no earlier than 2008-05-27 |
| 57 | Find header to add to Trinary/Parts | 6d? | 2008-05-19 A | 2008-05-26 A |  | 100% |  |  | finish no earlier than 2008-05-26 |
| 58 | Find jumper wires to add to Trinary/Parts | 6d | 2008-05-19 A | 2008-05-26 A |  | 100% |  |  | start no earlier than 2008-05-19 |
| 59 | Demonstrate simulation of guess.t | 6d? | 2008-05-19 A | 2008-05-26 A |  | 100% |  |  | finish no earlier than 2008-05-26 |
| 60 | Jeff - Enroll in senior project summer | 10d | 2008-05-19 A | 2008-05-30 |  | 60% | 4d | 65d | finish no earlier than 2008-05-30 |
| 61 | Design & order logic board, also order adder & sign boards | 10d? | 2008-05-19 A | 2008-05-30 |  | 40% | 6d? | 5d | start no earlier than 2008-05-19 |
| 62 | Design adder board | 6d? | 2008-05-19 A | 2008-05-26 A |  | 100% |  |  | finish no earlier than 2008-05-26 |
| 63 | Design sign board | 6d? | 2008-05-19 A | 2008-05-26 A |  | 100% |  |  | finish no earlier than 2008-05-26 |
| 64 | Prepare for CSC IAB Presentation | 9d? | 2008-05-20 | 2008-05-30 |  |  |  | 5d | finish no earlier than 2008-05-30 |
| 65 | Jeff - Make schedule for summer | 4d? | 2008-05-27 A | 2008-05-30 A |  | 100% |  |  | start no earlier than 2008-05-27 |
| 66 | Chirag - Make schedule for summer | 4d? | 2008-05-27 | 2008-05-30 |  |  |  | 65d | finish no earlier than 2008-05-30 |
| 67 | Antonio - Make schedule for summer | 4d? | 2008-05-27 | 2008-05-30 |  |  |  | 65d | finish no earlier than 2008-05-30 |
| 68 | Honors Progress Report Due | 3d? | 2008-05-27 | 2008-05-29 |  |  |  | 66d | start no earlier than 2008-05-27 |
| 69 | Fix Unicode in tools/eval.py | 5d? | 2008-05-27 | 2008-06-02 |  |  |  | 64d | finish no earlier than 2008-06-02 |
| 70 | Interface for base converter | 5d? | 2008-05-27 | 2008-06-02 |  |  |  | 64d | finish no earlier than 2008-06-02 |

Notes:
- 18: 2008-04-03 Jeff requested quote #3 from Digi-Key / 2008-04-08 Chirag gave quote #3 to Cindy to order / 2008-04-14 Contacted Debbie Tuson, extension 6-6116 on campus, said she would give the order to the purchasing girl this morning

| ID | Task | Duration | Start | Finish | Total slack | Constraint |
| --- | --- | --- | --- | --- | --- | --- |
| 71 | Base converter: int_cnvrt("10i",-3,10) | 5d? | 2008-05-27 | 2008-06-02 | 64d | finish no earlier than 2008-06-02 |
| 72 | Base converter: int_cnvrt("111",3,10) | 5d? | 2008-05-27 | 2008-06-02 | 64d | finish no earlier than 2008-06-02 |
| 73 | Base converter: to balanced trinary | 5d? | 2008-05-27 | 2008-06-02 | 64d | finish no earlier than 2008-06-02 |
| 74 | Expr creator: replace names with expressions | 5d? | 2008-05-27 | 2008-06-02 | 64d | finish no earlier than 2008-06-02 |
| 75 | Expr creator user interface | 5d? | 2008-05-27 | 2008-06-02 | 64d | finish no earlier than 2008-06-02 |
| 76 | Antonio - Ch12: Operating System | 6d? | 2008-05-26 | 2008-06-02 | 64d | finish no earlier than 2008-06-02 |
| 77 | Honors Final Report Due (9 pm) | 5d? | 2008-06-02 | 2008-06-06 | 60d | finish no earlier than 2008-06-06 |
| 78 | Senior project spec & schedule final due | 6d? | 2008-05-30 | 2008-06-06 | 60d | finish no earlier than 2008-06-06 |
| 79 | Green=Jeff | 1d? | 2008-06-23 | 2008-06-23 | 49d | start no earlier than 2008-06-23 |
| 80 | Jeff - Ch1: Boolean Logic | 6d? | 2008-06-23 | 2008-06-30 | 44d | finish no earlier than 2008-06-30 |
| 81 | Jeff - Ch2: Boolean Arithmetic | 6d? | 2008-06-30 | 2008-07-07 | 39d | finish no earlier than 2008-07-07 |
| 82 | CPE Senior Project Requirements | 6d | 2008-06-30 | 2008-07-07 | 39d | start no earlier than 2008-06-29 |
| 83 | Jeff - Ch3: Sequential Logic | 6d? | 2008-07-07 | 2008-07-14 | 34d | finish no earlier than 2008-07-14 |
| 84 | CPE Analysis of Senior Project Design | 6d | 2008-07-07 | 2008-07-14 | 34d | start no earlier than 2008-07-05 |
| 85 | Clean up website | 6d | 2008-07-14 | 2008-07-21 | 29d | start no earlier than 2008-07-14 |
| 86 | Code review eval.py | 6d | 2008-07-21 | 2008-07-28 | 24d | start no earlier than 2008-07-20 |
| 87 | CPE Report Rough Draft | 12.5d | 2008-07-17 | 2008-08-04 | 19d | finish no earlier than 2008-08-04 |
| 88 | Code review base_converter.py | 6d | 2008-07-28 | 2008-08-04 | 19d | start no earlier than 2008-07-26 |
| 89 | Two-pass assembler | 6d | 2008-08-04 | 2008-08-11 | 14d | start no earlier than 2008-08-04 |
| 90 | Code review CPU simulator | 6d | 2008-08-13 | 2008-08-20 | 7d | start no earlier than 2008-08-13 |
| 91 | CPE Report Finished | 11d? | 2008-08-15 | 2008-08-29 | 0d | finish no earlier than 2008-08-29 |

Notes:
- 84: http://www.cpe.calpoly.edu/students/Sr_Project_Design_Form.pdf
- 87: http://www.cpe.calpoly.edu/students/srprojectinfo.html
